# NEW Cheese Vat Controller Timeline

Schedule from MS Project, 2025-04-23 to 2025-07-23.

## Calendars

- Standard: Mon-Fri 08:00-12:00, 13:00-17:00; Sat-Sun off.

## Schedule

| ID | WBS | Task | Duration | Start | Finish | Predecessors | Total slack | Free slack |
| --- | --- | --- | --- | --- | --- | --- | --- | --- |
| 1 | 1 | **Cheese Mixer System** | 66d | 2025-04-23 | 2025-07-23 |  | 0d |  |
| 2 | 1.1 | **Project Initialization** | 4d | 2025-04-23 | 2025-04-28 |  | 0d |  |
| 3 | 1.1.1 | Define Design Requirements | 2d | 2025-04-23 | 2025-04-24 |  | 0d |  |
| 4 | 1.1.2 | Overviewing the parts w.r.t Design requirements | 1d | 2025-04-25 | 2025-04-25 | 3 | 0d |  |
| 5 | 1.1.3 | Purchasing the parts not available | 1d | 2025-04-28 | 2025-04-28 | 4 | 0d |  |
| 6 | 1.2 | **Controller** | 56d | 2025-04-29 | 2025-07-15 |  | 0d |  |
| 7 | 1.2.1 | **Low Level** | 16d | 2025-04-29 | 2025-05-20 |  | 0d |  |
| 8 | 1.2.1.1 | Interface with the temperature sensor | 1d | 2025-04-29 | 2025-04-29 | 2 | 0d |  |
| 9 | 1.2.1.2 | Interface with On/Off switches | 1d | 2025-05-08 | 2025-05-08 | 36 | 0d |  |
| 10 | 1.2.1.3 | Interface with VFD | 8d | 2025-05-09 | 2025-05-20 | 9 | 0d |  |
| 11 | 1.2.1.4 | Interfacing with GUI | 1d | 2025-05-01 | 2025-05-01 | 13 | 0d |  |
| 12 | 1.2.2 | **Mid Level** | 32d | 2025-04-30 | 2025-06-12 |  | 0d |  |
| 13 | 1.2.2.1 | Reading the temperature sensor values | 1d | 2025-04-30 | 2025-04-30 | 8 | 0d |  |
| 14 | 1.2.2.2 | Reading the VFD status/commands | 6d | 2025-05-21 | 2025-05-28 | 10 | 0d |  |
| 15 | 1.2.2.3 | Controlling the heating rods | 1d | 2025-05-12 | 2025-05-12 | 28 | 52d |  |
| 16 | 1.2.2.4 | Controlling Agitator Motor with controllers | 6d | 2025-06-03 | 2025-06-10 | 29 | 0d |  |
| 17 | 1.2.2.5 | Controlling Pump with switches | 2d | 2025-06-11 | 2025-06-12 | 16 | 28d | 0d |
| 18 | 1.2.3 | **High Level** | 41d | 2025-05-09 | 2025-07-04 |  | 13d |  |
| 19 | 1.2.3.1 | Enabling mode selection | 2d | 2025-06-13 | 2025-06-16 | 38 | 0d |  |
| 20 | 1.2.3.2 | Defining the state of operations | 4d | 2025-06-17 | 2025-06-20 | 19 | 0d |  |
| 21 | 1.2.3.3 | Pasteurization mode | 3d | 2025-06-24 | 2025-06-26 | 33 | 0d |  |
| 22 | 1.2.3.4 | Cheese mode | 1d | 2025-06-27 | 2025-06-27 | 21 | 0d |  |
| 23 | 1.2.3.5 | Cooling mode | 1d | 2025-06-30 | 2025-06-30 | 22 | 0d |  |
| 24 | 1.2.3.6 | Cheese drainage mode | 1d | 2025-07-01 | 2025-07-01 | 23 | 0d |  |
| 25 | 1.2.3.7 | Water drain and refill mode | 1d | 2025-07-02 | 2025-07-02 | 24 | 0d |  |
| 26 | 1.2.3.8 | Schedueling mode | 2d | 2025-07-03 | 2025-07-04 | 25 | 0d |  |
| 27 | 1.2.3.9 | Pump control logic | 1d | 2025-06-13 | 2025-06-13 | 17 | 28d |  |
| 28 | 1.2.3.10 | Defining the temperature limits to control heating rods | 1d | 2025-05-09 | 2025-05-09 | 9 | 52d | 0d |
| 29 | 1.2.3.11 | VFD agitator motor control | 3d | 2025-05-29 | 2025-06-02 | 14 | 0d |  |

| ID | WBS | Task | Duration | Start | Finish | Predecessors | Total slack |
| --- | --- | --- | --- | --- | --- | --- | --- |
| 30 | 1.2.4 | **User Level** | 53d | 2025-05-02 | 2025-07-15 |  | 0d |
| 31 | 1.2.4.1 | Integration and communication with GUI | 1d | 2025-05-02 | 2025-05-02 | 11 | 0d |
| 32 | 1.2.4.2 | Service interface | 2d | 2025-05-05 | 2025-05-06 | 31 | 0d |
| 33 | 1.2.4.3 | Modes Selection | 1d | 2025-06-23 | 2025-06-23 | 20 | 0d |
| 34 | 1.2.4.4 | Designing Multiple screens for modes | 2d | 2025-07-09 | 2025-07-10 | 35 | 0d |
| 35 | 1.2.4.5 | Linking Buttons for actions | 2d | 2025-07-07 | 2025-07-08 | 26 | 0d |
| 36 | 1.2.4.6 | Link temperature onto Display | 1d | 2025-05-07 | 2025-05-07 | 32 | 0d |
| 37 | 1.2.4.7 | Link Speed onto Display | 1d | 2025-06-11 | 2025-06-11 | 16 | 0d |
| 38 | 1.2.4.8 | Link direction onto Display | 1d | 2025-06-12 | 2025-06-12 | 37 | 0d |
| 39 | 1.2.4.9 | Multiple real-time tests with hardware | 3d | 2025-07-11 | 2025-07-15 | 34 | 0d |
| 40 | 1.3 | **Testing and documentation** | 6d | 2025-07-16 | 2025-07-23 |  | 0d |
| 41 | 1.3.1 | System testing and Debugging | 4d | 2025-07-16 | 2025-07-21 | 39 | 0d |
| 42 | 1.3.2 | Final Documentation | 2d | 2025-07-22 | 2025-07-23 | 41 | 0d |
